"Task ID","Name","Section/Column","Assignee","Due Date","Start Date","Description","Tags","Dependencies"
"ACT-1010","Project Charter & Stakeholder Baseline Sign-Off","1.0 PROJECT GOVERNANCE & PMO","Alex Morgan (Lead VA)","2026-09-03","2026-09-01","Formal symposium scope baseline authorized by Executive Principal. Establishes budget ceiling (£48,500), 75-day schedule baseline, and RACI governance matrix.","Governance, Milestone, Critical Path",""
"ACT-1020","Asana Master Project Setup & Dependency Calibration","1.0 PROJECT GOVERNANCE & PMO","Alex Morgan (Lead VA)","2026-09-07","2026-09-04","Configure Asana project board, custom fields (Priority, SLA, Deliverable Type), and automated Slack/Telegram notification triggers. Created with Asana Enterprise.","Asana, Setup, PMO","ACT-1010"
"ACT-1030","Weekly Executive Progress Report #01 Dispatched","1.0 PROJECT GOVERNANCE & PMO","Alex Morgan (Lead VA)","2026-09-14","2026-09-14","First weekly executive memo delivered at 08:30 GMT to Executive Principal detailing sprint progress and zero-float schedule defense.","Reporting, C-Suite","ACT-1020"
"ACT-2010","Speaker Curation Matrix & VIP Longlist Selection","2.0 SPEAKER CURATION & DOSSIERS","Alex Morgan (Lead VA)","2026-09-14","2026-09-08","Compile vetted list of 14 international keynote and panelist candidates across UK, West Africa, and North America for the Principal's review.","Speakers, Research","ACT-1020"
"ACT-2020","Speaker Formal Invitations, Contracts & Media Releases","2.0 SPEAKER CURATION & DOSSIERS","Alex Morgan (Lead VA)","2026-09-24","2026-09-15","Dispatch formal letter of invitation, speaker honorarium terms, and confidentiality/media consent agreements. Track signatures in 1Password/DocuSign.","Contracts, Legal","ACT-2010"
"ACT-2030","Confidential Speaker Briefing Dossiers Assembly","2.0 SPEAKER CURATION & DOSSIERS","Alex Morgan (Lead VA)","2026-10-02","2026-09-25","Compile 1-page executive counterparty dossiers for each confirmed speaker including bios, discussion talking points, and VIP green room preferences.","Dossiers, C-Suite, Critical Path","ACT-2020"
"ACT-2040","Virtual Stage Dry-Run Rehearsals with Speakers","2.0 SPEAKER CURATION & DOSSIERS","Alex Morgan (Lead VA)","2026-10-14","2026-10-11","Individual 15-minute AV line checks, lighting audit, microphone frequency check, and slide presentation run-through on Zoom VIP Bridge.","Rehearsal, AV Tech, Critical Path","ACT-2030"
"ACT-3010","Conference Master Visual Identity & Presentation Slates","3.0 CREATIVE IDENTITY & MEDIA ASSETS","Alex Morgan (Lead VA)","2026-09-13","2026-09-08","Design symposium brandmark, color palette, keynote slide templates, and lower-third typography hierarchy in Canva and Figma.","Design, Branding, Canva","ACT-1020"
"ACT-3020","Promotional Event Posters & Delegate Registration Kits","3.0 CREATIVE IDENTITY & MEDIA ASSETS","Alex Morgan (Lead VA)","2026-09-21","2026-09-14","Design A3 print flyers, RSVP story sequences, and digital delegate access badges for 400+ attendees.","Canva, Print, Marketing","ACT-3010"
"ACT-3030","High-Retention 9:16 Promotional Video Reels Cutdown","3.0 CREATIVE IDENTITY & MEDIA ASSETS","Alex Morgan (Lead VA)","2026-09-20","2026-09-11","Produce 3 kinetic vertical video reels using CapCut Pro and Premiere Pro with word-by-word yellow subtitles and -14 LUFS loudness normalization.","Video, CapCut, 9:16 Reels","ACT-3010"
"ACT-3040","Multi-Channel Editorial Cadence Launch (Asana Engine)","3.0 CREATIVE IDENTITY & MEDIA ASSETS","Alex Morgan (Lead VA)","2026-11-05","2026-09-22","Manage cross-platform promotional release cadence across Telegram, Instagram, and YouTube. Zero missed broadcast windows defended.","Editorial, Asana, Social","ACT-3020"
"ACT-4010","Virtual Stage VIP Infrastructure Setup & Registration Hub","4.0 PLATFORM & AV TECHNICAL RIDER","Alex Morgan (Lead VA)","2026-10-07","2026-10-03","Configure Zoom Events VIP Auditorium, attendee ticketing gateway, automated confirmation emails, and delegate calendar invitations.","Platform, Tech, Critical Path","ACT-2030"
"ACT-4020","Broadcast Audio Calibration & Lavalier Bench Test (-14 LUFS)","4.0 PLATFORM & AV TECHNICAL RIDER","Alex Morgan (Lead VA)","2026-10-10","2026-10-08","Full audio stress-test with Sennheiser wireless Lavalier, dual 65-inch confidence monitors, and backup redundant 5G cellular router.","Audio, Engineering, Critical Path","ACT-4010"
"ACT-5010","Master Stage Dress Rehearsal & Timekeeping Buffer Test","5.0 LIVE EVENT EXECUTION","Alex Morgan (Lead VA)","2026-10-16","2026-10-15","Full end-to-end dress rehearsal testing slide transitions, Zoom breakout rooms, timer confidence screens, and emergency failover protocols.","Rehearsal, Live Ops, Critical Path","ACT-4020,ACT-2040"
"ACT-5020","SYMPOSIUM LIVE STAGE TRANSMISSION (400+ DELEGATES)","5.0 LIVE EVENT EXECUTION","Alex Morgan (Lead VA)","2026-11-18","2026-11-18","Live execution of Global Mentoring Symposium 2026. Stage timekeeping, speaker queuing, live Q&A triage, and master multi-track audio recording.","MILESTONE, Live Stage, Critical Path","ACT-5010"
"ACT-6010","Master Video Cutdown, Chapters & YouTube Release","6.0 POST-SUMMIT SYNTHESIS & ONBOARDING","Alex Morgan (Lead VA)","2026-11-23","2026-11-19","12-step publication of symposium keynote to Executive Broadcast Desk: chapter timestamps, kinetic short clips, and community post.","YouTube, Editing, SOP-01","ACT-5020"
"ACT-6020","Post-Summit Impact Digest & Mentee Cohort Onboarding","6.0 POST-SUMMIT SYNTHESIS & ONBOARDING","Alex Morgan (Lead VA)","2026-11-25","2026-11-24","Synthesize delegate feedback into 12-page executive digest; onboard 25 new mentees into Notion CRM database with welcome packs.","Closeout, Notion, Mentees","ACT-6010"
